# 新奥创新服务平台二三期

Schedule from MS Project, 2017-08-09 to 2017-12-19, A marks actual dates.

## Calendars

- 标准: Mon-Fri 08:00-12:00, 13:00-17:00; Sat-Sun off. Exceptions (off unless hours are given): 2017-09-09 08:00-12:00, 13:00-17:00.

## Resources

| Resource |
| --- |
| 架构师 |
| 项目经理 |
| 高级开发一 |
| 高级开发二 |
| 前段开发一 |
| 资深测试一 |
| 前端开发一 |
| 前端1 |

## Schedule

| ID | WBS | Task | Type | Duration | Start | Finish | Predecessors | Complete | Remaining | Total slack | Constraint | Resources | Work | Actual work |
| --- | --- | --- | --- | --- | --- | --- | --- | --- | --- | --- | --- | --- | --- | --- |
| 1 | 1 | **第二期技术创新平台** |  | 39d? | 2017-08-09 A | 2017-09-29 |  | 34% | 25.93d? | 0d |  |  | 608h | 152.8h |
| 2 | 1.1 | **1.需求分析** |  | 26d | 2017-08-09 A | 2017-09-12 |  | 71% | 7.61d | 0d |  |  | 216h | 152.8h |
| 3 | 1.1.1 | 需求挖掘 | manual | 7d | 2017-08-09 A | 2017-08-17 A |  | 100% |  |  |  | 项目经理 | 56h | 56h |
| 4 | 1.1.2 | 需求说明书 | manual | 3d | 2017-08-18 A | 2017-08-22 A |  | 100% |  |  |  | 项目经理 | 24h | 24h |
| 5 | 1.1.3 | 效果图 | manual | 4d | 2017-08-22 A | 2017-08-25 A |  | 100% |  |  |  | 前端1 | 32h | 32h |
| 6 | 1.1.4 | **2.系统设计** |  | 13d | 2017-08-28 A | 2017-09-12 | 3, 4 | 39% | 7.9d | 0d |  |  | 104h | 40.8h |
| 7 | 1.1.4.1 | 数据库设计 | manual | 9d | 2017-08-28 A | 2017-09-07 |  | 50% | 4.5d |  |  | 架构师 | 72h | 36h |
| 8 | 1.1.4.2 | 原型设计 | manual | 2d | 2017-09-08 A | 2017-09-09 |  | 30% | 1.4d |  |  | 项目经理 | 16h | 4.8h |
| 9 | 1.1.4.3 | 概要设计 | manual | 2d | 2017-09-11 | 2017-09-12 |  |  |  |  |  | 项目经理 | 16h |  |
| 10 | 1.2 | **3.需求下单** |  | 3d | 2017-09-07 | 2017-09-09 | 7, 8, 9 |  |  |  |  |  | 64h |  |
| 11 | 1.2.1 | 下单审批 | manual | 1d | 2017-09-07 | 2017-09-07 |  |  |  |  |  | 高级开发一; 前端1 | 16h |  |
| 12 | 1.2.2 | 原始需求 | manual | 1d | 2017-09-07 | 2017-09-07 |  |  |  |  |  | 高级开发二; 前端开发一 | 16h |  |
| 13 | 1.2.3 | 寻源需求 | manual | 1d | 2017-09-08 | 2017-09-08 |  |  |  |  |  | 高级开发一; 前端1 | 16h |  |
| 14 | 1.2.4 | 需求拆解报告确认 | manual | 1d | 2017-09-09 | 2017-09-09 |  |  |  |  | start no earlier than 2017-09-09 | 高级开发二; 前端开发一 | 16h |  |
| 15 | 1.2.5 | 下单权限功能（新增） | manual | 1d? | 2017-09-07 | 2017-09-07 |  |  |  |  |  |  |  |  |
| 16 | 1.3 | **4.订单管理** |  | 6d | 2017-09-11 | 2017-09-18 | 11, 12, 13 |  |  | 0d |  |  | 184h |  |
| 17 | 1.3.1 | 项目经理 | manual | 1d | 2017-09-11 | 2017-09-11 |  |  |  |  |  | 高级开发一; 前端开发一; 高级开发二 | 24h |  |
| 18 | 1.3.2 | 需求拆解（立项表单上传、拆解报告上传） | manual | 1d | 2017-09-12 | 2017-09-12 |  |  |  |  |  | 高级开发二; 前端开发一 | 16h |  |
| 19 | 1.3.3 | 方案线索 | manual | 1d | 2017-09-12 | 2017-09-12 |  |  |  |  |  | 高级开发一; 前端1 | 16h |  |
| 20 | 1.3.4 | 会议记录 | manual | 1d | 2017-09-13 | 2017-09-13 |  |  |  |  |  | 高级开发二; 前端开发一 | 16h |  |
| 21 | 1.3.5 | 出差报告 | manual | 1d | 2017-09-13 | 2017-09-13 |  |  |  |  |  | 高级开发一; 前端1 | 16h |  |
| 22 | 1.3.6 | 问题记录 | manual | 1d | 2017-09-14 | 2017-09-14 |  |  |  |  |  | 高级开发二; 前端开发一 | 16h |  |
| 23 | 1.3.7 | 寻源报告 | manual | 1d | 2017-09-14 | 2017-09-14 |  |  |  |  |  | 高级开发一; 前端1 | 16h |  |
| 24 | 1.3.8 | 项目总结 | manual | 1d | 2017-09-15 | 2017-09-15 |  |  |  |  |  | 高级开发二; 前端开发一 | 16h |  |
| 25 | 1.3.9 | 过程纪要 | manual | 1d | 2017-09-15 | 2017-09-15 |  |  |  |  |  | 高级开发一; 前端1 | 16h |  |
| 26 | 1.3.10 | 项目团队 | manual | 1d | 2017-09-18 | 2017-09-18 |  |  |  |  |  | 高级开发二; 前端开发一 | 16h |  |
| 27 | 1.3.11 | 项目评价 | manual | 1d | 2017-09-18 | 2017-09-18 |  |  |  |  |  | 高级开发一; 前端1 | 16h |  |

| ID | WBS | Task | Type | Duration | Start | Finish | Predecessors | Total slack | Resources | Work |
| --- | --- | --- | --- | --- | --- | --- | --- | --- | --- | --- |
| 28 | 1.4 | **5.后台管理** |  | 3d | 2017-09-19 | 2017-09-21 | 17, 18, 19, 20, 21, 22, 23, 24, 25, 26, 27 | 0d |  | 64h |
| 29 | 1.4.1 | 用户信息管理 | manual | 1d | 2017-09-19 | 2017-09-19 |  |  | 高级开发二; 前端开发一 | 16h |
| 30 | 1.4.2 | 角色管理 | manual | 1d | 2017-09-20 | 2017-09-20 |  |  | 高级开发一; 前端1 | 16h |
| 31 | 1.4.3 | 权限管理 | manual | 1d | 2017-09-21 | 2017-09-21 |  |  | 高级开发二; 高级开发一; 前端1; 前端开发一 | 32h |
| 32 | 1.5 | **6.个人信息** |  | 2d | 2017-09-22 | 2017-09-25 | 29, 30, 31 | 0d |  | 32h |
| 33 | 1.5.1 | 个人介绍（单位、角色、特长等） | manual | 1d | 2017-09-22 | 2017-09-22 |  |  | 前端开发一; 高级开发一 | 16h |
| 34 | 1.5.2 | 需求列表 | manual | 1d | 2017-09-25 | 2017-09-25 |  |  | 前端1; 高级开发一 | 16h |
| 35 | 1.6 | **7.其他** |  | 3d? | 2017-09-26 | 2017-09-28 | 33, 24 | 0d |  | 8h |
| 36 | 1.6.1 | 集团门户权限集成 | manual | 3d | 2017-09-26 | 2017-09-28 |  |  |  |  |
| 37 | 1.6.2 | 后台日志跟踪前台展现功能（新增） | manual | 1d? | 2017-09-26 | 2017-09-26 |  |  |  |  |
| 38 | 1.6.3 | 词条编辑（新增） | manual | 1d? | 2017-09-26 | 2017-09-26 |  |  |  |  |
| 39 | 1.6.4 | 服务介绍 | manual | 1d | 2017-09-27 | 2017-09-27 |  |  | 前端1 | 8h |
| 40 | 1.7 | **8.测试** |  | 1d | 2017-09-28 | 2017-09-28 | 36, 39 | 0d |  | 8h |
| 41 | 1.7.1 | UAT及回归测试，覆盖测试，预部署 | manual | 1d | 2017-09-28 | 2017-09-28 |  |  | 资深测试一 | 8h |
| 42 | 1.8 | **9.Cutover & 支持** |  | 1d | 2017-09-29 | 2017-09-29 | 41 | 0d |  | 32h |
| 43 | 1.8.1 | 用户培训 | manual | 1d | 2017-09-29 | 2017-09-29 |  |  | 项目经理 | 8h |
| 44 | 1.8.2 | 上线准备及维护 | manual | 1d | 2017-09-29 | 2017-09-29 |  |  | 高级开发二; 高级开发一; 架构师 | 24h |
| 45 | 2 | **第三期技术创新平台** |  | 57d | 2017-10-02 | 2017-12-19 |  | 0d |  | 1376h |
| 46 | 2.1 | **1.需求分析** |  | 9d | 2017-10-02 | 2017-10-12 | 43, 44 |  |  | 72h |
| 47 | 2.1.1 | 需求挖掘 | manual | 5d | 2017-10-02 | 2017-10-06 |  |  | 项目经理 | 40h |
| 48 | 2.1.2 | 需求说明书 | manual | 2d | 2017-10-09 | 2017-10-10 |  |  | 项目经理 | 16h |
| 49 | 2.1.3 | 效果图 | manual | 2d | 2017-10-11 | 2017-10-12 |  |  | 前端1 | 16h |
| 50 | 2.2 | **2.系统设计** |  | 6d | 2017-10-13 | 2017-10-20 | 47, 48, 49 |  |  | 144h |
| 51 | 2.2.1 | 数据库设计 | manual | 6d | 2017-10-13 | 2017-10-20 |  |  | 高级开发一; 架构师 | 96h |
| 52 | 2.2.2 | 原型设计 | manual | 4d | 2017-10-13 | 2017-10-18 |  |  | 项目经理 | 32h |
| 53 | 2.2.3 | 概要设计 | manual | 2d | 2017-10-19 | 2017-10-20 |  |  | 项目经理 | 16h |

| ID | WBS | Task | Type | Duration | Start | Finish | Predecessors | Resources | Work |
| --- | --- | --- | --- | --- | --- | --- | --- | --- | --- |
| 54 | 2.3 | **情报定制** |  | 4d | 2017-10-23 | 2017-10-26 | 51, 52, 53 | 资深测试一 | 160h |
| 55 | 2.3.1 | 定制审批 | manual | 3d | 2017-10-23 | 2017-10-25 |  | 高级开发一; 前端开发一 | 48h |
| 56 | 2.3.2 | 情报池 | manual | 1d | 2017-10-26 | 2017-10-26 |  | 高级开发一; 前端1 | 16h |
| 57 | 2.3.3 | 情报反馈 | manual | 3d | 2017-10-23 | 2017-10-25 |  | 高级开发二; 前端1 | 48h |
| 58 | 2.3.4 | 客户确认 | manual | 1d | 2017-10-26 | 2017-10-26 |  | 高级开发二; 前端开发一 | 16h |
| 59 | 2.4 | **科技资讯** |  | 11d | 2017-10-27 | 2017-11-10 | 55, 56, 57, 58 |  | 296h |
| 60 | 2.4.1 | 科技资讯列表 | manual | 1d | 2017-10-27 | 2017-10-27 |  | 高级开发一; 前端1 | 16h |
| 61 | 2.4.2 | 科技资讯详情 | manual | 1d | 2017-10-27 | 2017-10-27 |  | 高级开发二; 前端开发一 | 16h |
| 62 | 2.4.3 | 科技资讯上传 | manual | 1d | 2017-10-30 | 2017-10-30 |  | 高级开发一; 前端1 | 16h |
| 63 | 2.4.4 | 爬虫 | manual | 7d | 2017-10-31 | 2017-11-08 |  | 高级开发二; 高级开发一; 架构师; 前端1 | 224h |
| 64 | 2.4.5 | 科技专栏上传 | manual | 1d | 2017-11-09 | 2017-11-09 |  | 高级开发二; 高级开发一; 前端1 | 24h |
| 65 | 2.5 | **任务计划** |  | 4d | 2017-11-10 | 2017-11-15 | 60, 61, 62, 63, 64 |  | 96h |
| 66 | 2.5.1 | 缓存更新 | manual | 2d | 2017-11-10 | 2017-11-13 |  | 高级开发二; 高级开发一; 前端1 | 48h |
| 67 | 2.5.2 | 性能优化 | manual | 2d | 2017-11-14 | 2017-11-15 |  | 高级开发二; 高级开发一; 前端1 | 48h |
| 68 | 2.6 | **评价** |  | 4d | 2017-11-16 | 2017-11-21 | 66, 67 |  | 112h |
| 69 | 2.6.1 | 需求团队评价 | manual | 2d | 2017-11-16 | 2017-11-17 |  | 高级开发一; 前端1 | 32h |
| 70 | 2.6.2 | 寻源团队评价 | manual | 2d | 2017-11-16 | 2017-11-17 |  | 高级开发二; 前端开发一 | 32h |
| 71 | 2.6.3 | 完成质量的评价维度 | manual | 2d | 2017-11-20 | 2017-11-21 |  | 高级开发二; 前端1; 高级开发一 | 48h |
| 72 | 2.7 | **个人信息** |  | 2d | 2017-11-22 | 2017-11-23 | 69, 70, 71 |  | 64h |
| 73 | 2.7.1 | 我的情报 | manual | 2d | 2017-11-22 | 2017-11-23 |  | 高级开发一; 前端开发一 | 32h |
| 74 | 2.7.2 | 消息 | manual | 2d | 2017-11-22 | 2017-11-23 |  | 高级开发二; 前端1 | 32h |
| 75 | 2.8 | **统计** |  | 6d | 2017-11-24 | 2017-12-01 | 73, 74 |  | 144h |
| 76 | 2.8.1 | 用户访问数统计 | manual | 3d | 2017-11-24 | 2017-11-28 |  | 高级开发一; 前端开发一 | 48h |
| 77 | 2.8.2 | 订单寻源统计 | manual | 3d | 2017-11-24 | 2017-11-28 |  | 高级开发二; 前端1 | 48h |
| 78 | 2.8.3 | 接单处理统计 | manual | 3d | 2017-11-29 | 2017-12-01 |  | 高级开发二; 前端1 | 48h |

| ID | WBS | Task | Type | Duration | Start | Finish | Predecessors | Resources | Work |
| --- | --- | --- | --- | --- | --- | --- | --- | --- | --- |
| 79 | 2.9 | **互动广场** |  | 5d | 2017-12-01 | 2017-12-07 | 76, 77, 78 |  | 80h |
| 80 | 2.9.1 | 联系我们 | manual | 1d | 2017-12-01 | 2017-12-01 |  | 前端开发一; 高级开发一 | 16h |
| 81 | 2.9.2 | 征集详情 | manual | 1d | 2017-12-04 | 2017-12-04 |  | 高级开发二; 前端1 | 16h |
| 82 | 2.9.3 | 我要征集 | manual | 3d | 2017-12-05 | 2017-12-07 |  | 高级开发一; 前端开发一 | 48h |
| 83 | 2.10 | **科技信息推特** |  | 4d | 2017-12-08 | 2017-12-13 | 80, 81, 82 |  | 120h |
| 84 | 2.10.1 | 信息发布 | manual | 1d | 2017-12-08 | 2017-12-08 |  | 高级开发二; 前端1 | 16h |
| 85 | 2.10.2 | 点赞 | manual | 1d | 2017-12-08 | 2017-12-08 |  | 高级开发一; 前端开发一 | 16h |
| 86 | 2.10.3 | 分享（全局） | manual | 1d | 2017-12-11 | 2017-12-11 |  | 高级开发二; 前端1 | 16h |
| 87 | 2.10.4 | 收藏（全局） | manual | 1d | 2017-12-11 | 2017-12-11 |  | 高级开发一; 前端开发一 | 16h |
| 88 | 2.10.5 | 图片 | manual | 1d | 2017-12-12 | 2017-12-12 |  | 高级开发二; 前端1 | 16h |
| 89 | 2.10.6 | 音频 | manual | 1d | 2017-12-13 | 2017-12-13 |  | 高级开发一; 前端开发一 | 16h |
| 90 | 2.10.7 | 视频 | manual | 2d | 2017-12-12 | 2017-12-13 |  | 高级开发二; 前端1; 高级开发一 | 24h |
| 91 | 2.11 | **其他** |  | 2d | 2017-12-14 | 2017-12-15 | 84, 81, 82, 83, 85, 86, 87, 88, 89, 90 |  | 40h |
| 92 | 2.11.1 | 我的消息 | manual | 1d | 2017-12-14 | 2017-12-14 |  | 高级开发一; 前端开发一 | 16h |
| 93 | 2.11.2 | 技术报告推送 | milestone, manual | 0d | 2017-12-14 | 2017-12-14 |  | 高级开发二; 前端1 |  |
| 94 | 2.11.3 | 学习中心 | manual | 1d? | 2017-12-14 | 2017-12-14 |  |  |  |
| 95 | 2.11.4 | 活动中心 | manual | 1d? | 2017-12-14 | 2017-12-14 |  |  |  |
| 96 | 2.11.5 | 邮件系统（即时邮件和定时邮件 | manual | 1d | 2017-12-15 | 2017-12-15 |  | 高级开发二; 高级开发一; 前端1 | 24h |
| 97 | 2.12 | **4.测试** |  | 1d | 2017-12-18 | 2017-12-18 | 92, 93, 96 |  | 8h |
| 98 | 2.12.1 | UAT及回归测试，覆盖测试，预部署 | manual | 1d | 2017-12-18 | 2017-12-18 |  | 资深测试一 | 8h |
| 99 | 2.13 | **5.Cutover & 支持** |  | 1d | 2017-12-19 | 2017-12-19 | 98 |  | 40h |
| 100 | 2.13.1 | 用户培训 | manual | 1d | 2017-12-19 | 2017-12-19 |  | 项目经理 | 8h |
| 101 | 2.13.2 | 上线准备及维护 | manual | 1d | 2017-12-19 | 2017-12-19 |  | 高级开发二; 高级开发一; 架构师; 前端1 | 32h |
